# DDL_ProjectSchedule_v1.0_EN

Schedule from MS Project, 2015-09-07 to 2015-12-18.

## Calendars

- Standard: Mon-Fri 08:00-12:00, 13:00-17:00; Sat-Sun off.

## Resources

| Resource |
| --- |
| TEAM |
| ManhLN |
| HuyNM |
| ChinhVC |
| TrungCV |
| DevTeam |
| DesignTeam |
| MaiCTP |
| AnhDD |
| TestTEAM |

## Schedule

| ID | WBS | Task | Duration | Start | Finish | Predecessors | Total slack | Constraint | Resources | Work |
| --- | --- | --- | --- | --- | --- | --- | --- | --- | --- | --- |
| 1 | 1 | **Dandelion (DDL)** | 75d? | 2015-09-07 | 2015-12-18 |  | 0d |  |  | 1096h |
| 2 | 1.1 | **Initiation** | 15d? | 2015-09-07 | 2015-09-25 |  | 0d |  |  | 380h |
| 3 | 1.1.1 | Form up team roles | 0.5d | 2015-09-07 | 2015-09-07 |  | 0d |  | TEAM | 4h |
| 4 | 1.1.2 | Select project idea | 0.5d | 2015-09-07 | 2015-09-07 | 3 | 0d |  | TEAM | 4h |
| 5 | 1.1.3 | **Develop project idea** | 1d? | 2015-09-08 | 2015-09-08 | 4 | 0d |  |  | 16h |
| 6 | 1.1.3.1 | Define project scope | 1d? | 2015-09-08 | 2015-09-08 |  | 0d |  | TEAM | 8h |
| 7 | 1.1.3.2 | Define project features | 1d? | 2015-09-08 | 2015-09-08 |  | 0d |  | TEAM | 8h |
| 8 | 1.1.4 | Kick-off meeting | 1d? | 2015-09-09 | 2015-09-09 | 5 | 0d |  | TEAM | 8h |
| 9 | 1.1.5 | **Environment** | 2d? | 2015-09-10 | 2015-09-11 | 8 | 0d |  |  | 40h |
| 10 | 1.1.5.1 | Create guideline to install and use tools & environments | 0.5d? | 2015-09-10 | 2015-09-10 |  | 0d |  | ManhLN | 4h |
| 11 | 1.1.5.2 | **Install tools & environments** | 1d? | 2015-09-10 | 2015-09-11 | 10 | 0d |  |  | 32h |
| 12 | 1.1.5.2.1 | Install Visual Studio 2013 | 1d? | 2015-09-10 | 2015-09-11 |  | 0d |  | TEAM | 8h |
| 13 | 1.1.5.2.2 | Install TortoiseGit | 1d? | 2015-09-10 | 2015-09-11 |  | 0d |  | TEAM | 8h |
| 14 | 1.1.5.2.3 | Install Microsoft SQL Server 2010 | 1d? | 2015-09-10 | 2015-09-11 |  | 0d |  | TEAM | 8h |
| 15 | 1.1.5.2.4 | Install Subline Text | 1d? | 2015-09-10 | 2015-09-11 |  | 0d |  | TEAM | 8h |
| 16 | 1.1.5.3 | Trainning using tools & environments | 0.5d | 2015-09-11 | 2015-09-11 | 11 | 0d |  | HuyNM | 4h |
| 17 | 1.1.6 | **Technology Research** | 8d? | 2015-09-14 | 2015-09-23 | 16 | 0d |  |  | 200h |
| 18 | 1.1.6.1 | Study .net MVC 5 | 7d | 2015-09-14 | 2015-09-22 |  | 1d | start no earlier than 2015-09-14 | DevTeam | 56h |
| 19 | 1.1.6.2 | Study AngularJS | 7d | 2015-09-14 | 2015-09-22 |  | 1d |  | DevTeam | 56h |
| 20 | 1.1.6.3 | Study Bootstraps, HTML5 & CSS3 | 7d | 2015-09-14 | 2015-09-22 |  | 0d |  | DesignTeam | 56h |
| 21 | 1.1.6.4 | **Define and study others technologies to be used in system** | 1d? | 2015-09-23 | 2015-09-23 | 20 | 0d |  |  | 32h |
| 22 | 1.1.6.4.1 | Code first migration | 1d | 2015-09-23 | 2015-09-23 |  | 0d |  | ManhLN | 8h |
| 23 | 1.1.6.4.2 | Restful API on .net MVC | 1d | 2015-09-23 | 2015-09-23 |  | 0d |  | ManhLN | 8h |
| 24 | 1.1.6.4.3 | Payment by BaoKim API | 1d? | 2015-09-23 | 2015-09-23 |  | 0d |  | HuyNM | 8h |
| 25 | 1.1.6.4.4 | Facebook Login API | 1d? | 2015-09-23 | 2015-09-23 |  | 0d |  | TrungCV | 8h |

| ID | WBS | Task | Type | Duration | Start | Finish | Predecessors | Total slack | Free slack | Resources | Work |
| --- | --- | --- | --- | --- | --- | --- | --- | --- | --- | --- | --- |
| 26 | 1.1.7 | **Demo & Prototypes** |  | 2d? | 2015-09-24 | 2015-09-25 | 17 | 0d |  |  | 24h |
| 27 | 1.1.7.1 | Create Demo |  | 2d | 2015-09-24 | 2015-09-25 |  | 0d |  | DevTeam | 16h |
| 28 | 1.1.7.2 | Create Prototype |  | 1d? | 2015-09-24 | 2015-09-24 |  | 1d |  | DesignTeam | 8h |
| 29 | 1.1.8 | **Project Introduction** |  | 1d | 2015-09-10 | 2015-09-10 | 8 | 4.5d | 0d |  | 8h |
| 30 | 1.1.8.1 | Create Project Introduction |  | 1d | 2015-09-10 | 2015-09-10 |  | 4.5d |  | HuyNM | 8h |
| 31 | 1.1.9 | **Project Plan** |  | 5d? | 2015-09-11 | 2015-09-17 | 29 | 4.5d | 0d |  | 40h |
| 32 | 1.1.9.1 | Create Project Schedule |  | 2d | 2015-09-11 | 2015-09-14 |  | 4.5d | 0d | ManhLN | 16h |
| 33 | 1.1.9.2 | Create Project Plan in .mmp file & MS word |  | 1d | 2015-09-15 | 2015-09-15 | 32 | 4.5d | 0d | AnhDD | 8h |
| 34 | 1.1.9.3 | Create CM Plan |  | 1d | 2015-09-16 | 2015-09-16 | 33 | 4.5d | 0d | MaiCTP | 8h |
| 35 | 1.1.9.4 | Review Project Plan |  | 1d? | 2015-09-17 | 2015-09-17 | 34 | 4.5d |  | ManhLN | 8h |
| 36 | 1.1.10 | **User Requirement Specification** |  | 1.5d? | 2015-09-11 | 2015-09-14 | 29 | 8d | 3.5d |  | 12h |
| 37 | 1.1.10.1 | Create User Requirement Sepecification |  | 1d | 2015-09-11 | 2015-09-11 |  | 8d | 0d | ChinhVC | 8h |
| 38 | 1.1.10.2 | Review User Requirement Specification |  | 0.5d? | 2015-09-14 | 2015-09-14 | 37 | 8d |  | ManhLN | 4h |
| 39 | 1.1.11 | **Q&A Sheet** |  | 1.5d? | 2015-09-11 | 2015-09-14 | 29 | 9.5d |  |  | 12h |
| 40 | 1.1.11.1 | Create Q&A sheet |  | 0.5d? | 2015-09-11 | 2015-09-11 |  | 9.5d | 0d | TrungCV | 4h |
| 41 | 1.1.11.2 | Review Q&A sheet |  | 0.5d? | 2015-09-11 | 2015-09-11 | 40 | 9.5d | 0d | ManhLN | 4h |
| 42 | 1.1.11.3 | Translate Q&A sheet to Japanese |  | 0.5d? | 2015-09-14 | 2015-09-14 | 41 | 9.5d |  | MaiCTP | 4h |
| 43 | 1.1.12 | SRS/PP Review checklist |  | 0.5d? | 2015-09-18 | 2015-09-18 | 36, 31 | 4.5d | 0d | ManhLN | 4h |
| 44 | 1.1.13 | Create progress report 1 |  | 1d | 2015-09-18 | 2015-09-21 | 43 | 4.5d | 0d | MaiCTP | 8h |
| 45 | 1.1.14 | Submit progress report 1 | milestone | 0d | 2015-09-21 | 2015-09-21 | 44 | 4.5d |  | ManhLN |  |
| 46 | 1.2 | **Solution** |  | 24.5d? | 2015-09-28 | 2015-10-30 | 2 | 0d |  |  | 252h |
| 47 | 1.2.1 | **Software Requirement Specification** |  | 2.5d? | 2015-09-28 | 2015-09-30 |  | 0d |  |  | 20h |
| 48 | 1.2.1.1 | **Non-functional Requirements Specification** |  | 1.5d? | 2015-09-28 | 2015-09-29 |  | 0d |  |  | 12h |
| 49 | 1.2.1.1.1 | Define Security Requirements |  | 0.5d? | 2015-09-28 | 2015-09-28 |  | 0d |  | ManhLN | 4h |
| 50 | 1.2.1.1.2 | Define Performane Requirements |  | 0.5d? | 2015-09-28 | 2015-09-28 | 49 | 0d |  | HuyNM | 4h |
| 51 | 1.2.1.1.3 | Define User-interface Requirements |  | 0.5d? | 2015-09-29 | 2015-09-29 | 50 | 0d |  | ChinhVC | 4h |

| ID | WBS | Task | Type | Duration | Start | Finish | Predecessors | Total slack | Free slack | Resources | Work |
| --- | --- | --- | --- | --- | --- | --- | --- | --- | --- | --- | --- |
| 52 | 1.2.1.2 | **Functional Requirements Specification** |  | 1d? | 2015-09-29 | 2015-09-30 | 48 | 0d |  |  | 8h |
| 53 | 1.2.1.2.1 | Define User Client Module functional Requirements |  | 0.5d? | 2015-09-29 | 2015-09-29 |  | 0d |  | ChinhVC | 4h |
| 54 | 1.2.1.2.2 | Define Admin Module functional Requirments |  | 0.5d? | 2015-09-30 | 2015-09-30 | 53 | 0d |  | HuyNM | 4h |
| 55 | 1.2.2 | **System Design** |  | 9d? | 2015-09-30 | 2015-10-13 | 47 | 0d |  |  | 128h |
| 56 | 1.2.2.1 | Create design review checklist |  | 1d? | 2015-09-30 | 2015-10-01 |  | 0d |  | ChinhVC | 8h |
| 57 | 1.2.2.2 | **Architectural Design** |  | 3d? | 2015-10-01 | 2015-10-06 | 56 | 0d |  |  | 24h |
| 58 | 1.2.2.2.1 | Define architectural design |  | 1d | 2015-10-01 | 2015-10-02 |  | 0d |  | ManhLN | 8h |
| 59 | 1.2.2.2.2 | Define system features |  | 1d? | 2015-10-02 | 2015-10-05 | 58 | 0d |  | ChinhVC | 8h |
| 60 | 1.2.2.2.3 | Study and choose suitable architectural design |  | 0.5d? | 2015-10-05 | 2015-10-05 | 59 | 0d |  | DevTeam | 4h |
| 61 | 1.2.2.2.4 | Review architectural design |  | 0.5d? | 2015-10-06 | 2015-10-06 | 60 | 0d |  | HuyNM | 4h |
| 62 | 1.2.2.2.5 | Complete Architectural Design version 1.0 | milestone | 0d | 2015-10-06 | 2015-10-06 | 61 | 0d |  |  |  |
| 63 | 1.2.2.3 | **Screen design** |  | 4d? | 2015-10-01 | 2015-10-07 | 56 | 17d |  |  | 32h |
| 64 | 1.2.2.3.1 | Create Screen Flow document |  | 1d? | 2015-10-01 | 2015-10-02 |  | 17d | 0d | ChinhVC | 8h |
| 65 | 1.2.2.3.2 | Create client screen design |  | 1d? | 2015-10-02 | 2015-10-05 | 64 | 17d | 0d | AnhDD | 8h |
| 66 | 1.2.2.3.3 | Create admin screen design |  | 1d? | 2015-10-05 | 2015-10-06 | 65 | 17d | 0d | MaiCTP | 8h |
| 67 | 1.2.2.3.4 | Review screen design |  | 1d? | 2015-10-06 | 2015-10-07 | 66 | 17d |  | ChinhVC | 8h |
| 68 | 1.2.2.4 | **Database design** |  | 3d? | 2015-10-01 | 2015-10-06 | 56 | 0d |  |  | 24h |
| 69 | 1.2.2.4.1 | Create database design |  | 2d | 2015-10-01 | 2015-10-05 |  | 0d |  | TrungCV | 16h |
| 70 | 1.2.2.4.2 | Review database design |  | 1d? | 2015-10-05 | 2015-10-06 | 69 | 0d |  | ManhLN | 8h |
| 71 | 1.2.2.4.3 | Complete database design | milestone | 0d | 2015-10-06 | 2015-10-06 | 70 | 0d |  |  |  |
| 72 | 1.2.2.5 | **Class/Component Design** |  | 5d? | 2015-10-06 | 2015-10-13 | 57, 68 | 0d |  |  | 40h |
| 73 | 1.2.2.5.1 | Define Class and Component |  | 1d | 2015-10-06 | 2015-10-07 |  | 0d |  | HuyNM | 8h |
| 74 | 1.2.2.5.2 | Create Class/component design |  | 3d | 2015-10-07 | 2015-10-12 | 73 | 0d |  | TrungCV | 24h |
| 75 | 1.2.2.5.3 | Review class/component design |  | 1d? | 2015-10-12 | 2015-10-13 | 74 | 0d |  | ManhLN | 8h |
| 76 | 1.2.3 | Create progress report 2 |  | 2d | 2015-10-13 | 2015-10-15 | 72 | 0d |  | MaiCTP | 16h |
| 77 | 1.2.4 | Submit progress report 2 | milestone | 0d | 2015-10-15 | 2015-10-15 | 76 | 0d |  | ManhLN |  |

| ID | WBS | Task | Type | Duration | Start | Finish | Predecessors | Total slack | Free slack | Resources | Work |
| --- | --- | --- | --- | --- | --- | --- | --- | --- | --- | --- | --- |
| 78 | 1.2.5 | **Testing** |  | 10d? | 2015-10-15 | 2015-10-29 | 77 | 0d |  |  | 80h |
| 79 | 1.2.5.1 | Create test plan/case checklists |  | 1d? | 2015-10-15 | 2015-10-16 |  | 0d |  | MaiCTP | 8h |
| 80 | 1.2.5.2 | Create test plan |  | 2d | 2015-10-16 | 2015-10-20 | 79 | 0d |  | TestTEAM | 16h |
| 81 | 1.2.5.3 | Review test plan |  | 1d? | 2015-10-20 | 2015-10-21 | 80 | 0d |  | MaiCTP | 8h |
| 82 | 1.2.5.4 | **Test cases** |  | 6d? | 2015-10-21 | 2015-10-29 | 81 | 0d |  |  | 48h |
| 83 | 1.2.5.4.1 | **Integration test case** |  | 3d? | 2015-10-21 | 2015-10-26 |  | 0d |  |  | 24h |
| 84 | 1.2.5.4.1.1 | Create integration test case |  | 2d | 2015-10-21 | 2015-10-23 |  | 0d |  | AnhDD | 16h |
| 85 | 1.2.5.4.1.2 | Review integration test case |  | 1d? | 2015-10-23 | 2015-10-26 | 84 | 0d |  | MaiCTP | 8h |
| 86 | 1.2.5.4.2 | **System test case** |  | 3d? | 2015-10-26 | 2015-10-29 | 83 | 0d |  |  | 24h |
| 87 | 1.2.5.4.2.1 | Create system test case |  | 2d | 2015-10-26 | 2015-10-28 |  | 0d |  | ChinhVC | 16h |
| 88 | 1.2.5.4.2.2 | Review system test case |  | 1d? | 2015-10-28 | 2015-10-29 | 87 | 0d |  | MaiCTP | 8h |
| 89 | 1.2.6 | Create progress report 3 |  | 1d? | 2015-10-29 | 2015-10-30 | 78 | 0d |  | MaiCTP | 8h |
| 90 | 1.2.7 | Submit progress report 3 | milestone | 0d | 2015-10-30 | 2015-10-30 | 89 | 0d |  | ManhLN |  |
| 91 | 1.3 | **Construction** |  | 29.5d? | 2015-10-30 | 2015-12-10 | 46 | 0d |  |  | 416h |
| 92 | 1.3.1 | **Define Coding Standards** |  | 1d? | 2015-10-30 | 2015-11-02 |  | 0d |  |  | 16h |
| 93 | 1.3.1.1 | Create Coding Convention |  | 1d? | 2015-10-30 | 2015-11-02 |  | 0d |  | ManhLN | 8h |
| 94 | 1.3.1.2 | Create Code & UT Test review checklist |  | 1d? | 2015-10-30 | 2015-11-02 |  | 0d |  | MaiCTP | 8h |
| 95 | 1.3.2 | **Screen Design** |  | 1d? | 2015-11-02 | 2015-11-03 | 92 | 0d |  |  | 8h |
| 96 | 1.3.2.1 | Refine screen design document |  | 1d? | 2015-11-02 | 2015-11-03 |  | 0d |  | ChinhVC | 8h |
| 97 | 1.3.3 | **Coding & Unit test** |  | 22d? | 2015-11-02 | 2015-12-02 | 92 | 5d | 0d |  | 160h |
| 98 | 1.3.3.1 | Structure core modules & source code common |  | 2d | 2015-11-02 | 2015-11-04 |  | 5d | 0d |  |  |
| 99 | 1.3.3.2 | **Client User Module** |  | 12d? | 2015-11-04 | 2015-11-20 | 98, 95 | 5d | 0d |  | 96h |
| 100 | 1.3.3.2.1 | Home Page Module |  | 2d | 2015-11-04 | 2015-11-06 |  | 5d | 0d | ManhLN | 16h |
| 101 | 1.3.3.2.2 | Login/ Logout Module |  | 1d? | 2015-11-06 | 2015-11-09 | 100 | 5d | 0d | ManhLN | 8h |

| ID | WBS | Task | Type | Duration | Start | Finish | Predecessors | Total slack | Free slack | Resources | Work |
| --- | --- | --- | --- | --- | --- | --- | --- | --- | --- | --- | --- |
| 102 | 1.3.3.2.3 | **Project module** |  | 4d | 2015-11-09 | 2015-11-13 | 101 | 5d | 0d |  | 32h |
| 103 | 1.3.3.2.3.1 | Create/manage a project Module |  | 2d | 2015-11-09 | 2015-11-11 |  | 5d | 0d | HuyNM | 16h |
| 104 | 1.3.3.2.3.2 | View/Back a project Module |  | 2d | 2015-11-11 | 2015-11-13 | 103 | 5d |  | HuyNM | 16h |
| 105 | 1.3.3.2.4 | User Personal Page Module |  | 3d | 2015-11-13 | 2015-11-18 | 102 | 5d | 0d | TrungCV | 24h |
| 106 | 1.3.3.2.5 | Search Module |  | 1d? | 2015-11-18 | 2015-11-19 | 105 | 5d | 0d | ChinhVC | 8h |
| 107 | 1.3.3.2.6 | Message Module |  | 1d | 2015-11-19 | 2015-11-20 | 106 | 5d |  | TrungCV | 8h |
| 108 | 1.3.3.3 | **Admin Module** |  | 8d? | 2015-11-20 | 2015-12-02 | 99 | 5d | 0d |  | 64h |
| 109 | 1.3.3.3.1 | Login/ Logout module |  | 1d? | 2015-11-20 | 2015-11-23 |  | 5d | 0d | ManhLN | 8h |
| 110 | 1.3.3.3.2 | Manage Users Module |  | 2d | 2015-11-23 | 2015-11-25 | 109 | 5d | 0d | TrungCV | 16h |
| 111 | 1.3.3.3.3 | Manage Projects Module |  | 2d | 2015-11-25 | 2015-11-27 | 110 | 5d | 0d | HuyNM | 16h |
| 112 | 1.3.3.3.4 | Manage Backings Module |  | 1d? | 2015-11-27 | 2015-11-30 | 111 | 5d | 0d | ChinhVC | 8h |
| 113 | 1.3.3.3.5 | Manage Categories Module |  | 1d? | 2015-11-30 | 2015-12-01 | 112 | 5d | 0d | TrungCV | 8h |
| 114 | 1.3.3.3.6 | Mangage Silder Module |  | 1d? | 2015-12-01 | 2015-12-02 | 113 | 5d |  | HuyNM | 8h |
| 115 | 1.3.3.4 | Complete Coding | milestone | 0d | 2015-12-02 | 2015-12-02 | 99, 108 | 5d |  |  |  |
| 116 | 1.3.4 | Create Progress Report 4 |  | 1d? | 2015-12-02 | 2015-12-03 | 95, 97 | 5.5d | 0d | ManhLN | 8h |
| 117 | 1.3.5 | Submit Progress Report 4 | milestone | 0d | 2015-12-03 | 2015-12-03 | 116 | 5.5d |  | ManhLN |  |
| 118 | 1.3.6 | **Testing** |  | 26d? | 2015-11-03 | 2015-12-09 |  | 0d |  |  | 208h |
| 119 | 1.3.6.1 | Update Test Case |  | 1d? | 2015-11-03 | 2015-11-04 | 95 | 0d |  | MaiCTP | 8h |
| 120 | 1.3.6.2 | **Execute Test Round 1** |  | 12d | 2015-11-04 | 2015-11-20 | 119 | 0d |  |  | 96h |
| 121 | 1.3.6.2.1 | Execute Component Test |  | 2d | 2015-11-04 | 2015-11-06 |  | 0d |  | TestTEAM | 16h |
| 122 | 1.3.6.2.2 | Fix bug Component Test |  | 2d | 2015-11-06 | 2015-11-10 | 121 | 0d |  | DevTeam | 16h |
| 123 | 1.3.6.2.3 | Execute Integration Test |  | 2d | 2015-11-10 | 2015-11-12 | 122 | 0d |  | TestTEAM | 16h |
| 124 | 1.3.6.2.4 | Fix bug Integration Test |  | 2d | 2015-11-12 | 2015-11-16 | 123 | 0d |  | DevTeam | 16h |
| 125 | 1.3.6.2.5 | Execute System Test |  | 2d | 2015-11-16 | 2015-11-18 | 124 | 0d |  | TestTEAM | 16h |
| 126 | 1.3.6.2.6 | Fix bug System Test |  | 2d | 2015-11-18 | 2015-11-20 | 125 | 0d |  | DevTeam | 16h |
| 127 | 1.3.6.3 | Update Test Case |  | 1d | 2015-11-20 | 2015-11-23 | 120 | 0d |  | MaiCTP | 8h |

| ID | WBS | Task | Type | Duration | Start | Finish | Predecessors | Total slack | Resources | Work |
| --- | --- | --- | --- | --- | --- | --- | --- | --- | --- | --- |
| 128 | 1.3.6.4 | **Execute Test Round 2** |  | 11d | 2015-11-23 | 2015-12-08 | 127 | 0d |  | 88h |
| 129 | 1.3.6.4.1 | Execute Component Test |  | 2d | 2015-11-23 | 2015-11-25 |  | 0d | TestTEAM | 16h |
| 130 | 1.3.6.4.2 | Fix bug Component Test |  | 2d | 2015-11-25 | 2015-11-27 | 129 | 0d | DevTeam | 16h |
| 131 | 1.3.6.4.3 | Execute Integration Test |  | 2d | 2015-11-27 | 2015-12-01 | 130 | 0d | TestTEAM | 16h |
| 132 | 1.3.6.4.4 | Fix bug Integration Test |  | 2d | 2015-12-01 | 2015-12-03 | 131 | 0d | DevTeam | 16h |
| 133 | 1.3.6.4.5 | Execute System Test |  | 1d | 2015-12-03 | 2015-12-04 | 132 | 0d | TestTEAM | 8h |
| 134 | 1.3.6.4.6 | Fix bug System Test |  | 2d | 2015-12-04 | 2015-12-08 | 133 | 0d | DevTeam | 16h |
| 135 | 1.3.6.5 | Create Test Report |  | 1d | 2015-12-08 | 2015-12-09 | 120, 128 | 0d | MaiCTP | 8h |
| 136 | 1.3.7 | **Quality Control** |  | 0.5d? | 2015-12-09 | 2015-12-09 | 118, 97 | 0d |  | 8h |
| 137 | 1.3.7.1 | Create Quality Report |  | 0.5d? | 2015-12-09 | 2015-12-09 |  | 0d | MaiCTP | 4h |
| 138 | 1.3.7.2 | Review Quality Report |  | 0.5d? | 2015-12-09 | 2015-12-09 |  | 0d | ManhLN | 4h |
| 139 | 1.3.8 | Create Progress Report 5 |  | 1d? | 2015-12-10 | 2015-12-10 | 136 | 0d | MaiCTP | 8h |
| 140 | 1.3.9 | Submit Progress Report 5 | milestone | 0d | 2015-12-10 | 2015-12-10 | 139 | 0d | ManhLN |  |
| 141 | 1.4 | **Termination** |  | 6d? | 2015-12-11 | 2015-12-18 | 91 | 0d |  | 48h |
| 142 | 1.4.1 | **Final Report Document** |  | 4d? | 2015-12-11 | 2015-12-16 |  | 0d |  | 32h |
| 143 | 1.4.1.1 | Create Final Report document |  | 1d? | 2015-12-11 | 2015-12-11 |  | 0d | TEAM | 8h |
| 144 | 1.4.1.2 | Create Installing Guide |  | 1d | 2015-12-14 | 2015-12-14 | 143 | 0d | HuyNM | 8h |
| 145 | 1.4.1.3 | Create User Guideline |  | 0.5d? | 2015-12-15 | 2015-12-15 | 144 | 0d | ChinhVC | 4h |
| 146 | 1.4.1.4 | Create Project Result Assessment |  | 0.5d? | 2015-12-15 | 2015-12-15 | 145 | 0d | MaiCTP | 4h |
| 147 | 1.4.1.5 | Create Slides for Final Presentation |  | 1d | 2015-12-16 | 2015-12-16 | 146 | 0d | TEAM | 8h |
| 148 | 1.4.1.6 | Submit all Final Documents and Source codes | milestone | 0d | 2015-12-16 | 2015-12-16 | 147 | 0d | ManhLN |  |
| 149 | 1.4.2 | **Pre-closing** |  | 1d? | 2015-12-17 | 2015-12-17 |  | 0d |  | 8h |
| 150 | 1.4.2.1 | Trainning presentation |  | 1d? | 2015-12-17 | 2015-12-17 | 142 | 0d | TEAM | 8h |
| 151 | 1.4.3 | **Closing** |  | 1d? | 2015-12-18 | 2015-12-18 | 150 | 0d |  | 8h |
| 152 | 1.4.3.1 | Presentation for Capstone Project |  | 1d? | 2015-12-18 | 2015-12-18 |  | 0d | TEAM | 8h |
| 153 | 1.4.3.2 | Complete Project | milestone | 0d | 2015-12-18 | 2015-12-18 | 152 | 0d |  |  |
